# ConocoPhillips Barossa FPSO Internal Turret Mooring System FEED

Schedule from MS Project XML, 2018-06-01 to 2019-03-29, status date 2018-06-01.

## Calendars

- JBAS - 1 - SOFEC (Houston): Mon-Fri 08:00-12:00, 13:00-17:00; Sat-Sun off. Exceptions (off unless hours are given): 2018-07-04, 2018-09-03, 2018-11-22 to 2018-11-23, 2018-12-24 to 2018-12-26, 2018-12-31 to 2019-01-01.

## Schedule

| ID | WBS | Task | Type | Duration | Start | Finish | Predecessors | Baseline start | Baseline finish | Baseline duration | Total slack | Free slack | Constraint | Text1 |
| --- | --- | --- | --- | --- | --- | --- | --- | --- | --- | --- | --- | --- | --- | --- |
| 1 | 0 | **Project Milestones** |  | 207d | 2018-06-01 | 2019-03-29 |  |  |  |  | 0d |  |  |  |
| 2 | 0.1 | **MILESTONES** |  | 199d | 2018-06-01 | 2019-03-19 |  |  |  |  | 8d |  |  |  |
| 3 | 0.1 | Completion of FEED | milestone | 0d | 2019-03-19 | 2019-03-19 | 83, 88, 55, 56, 54, 90, 78, 87 | 2019-03-29 | 2019-03-29 |  | 8d |  | must finish on 2019-03-29 | F1002 |
| 4 | 0.1 | FEED Contract Award | milestone | 0d | 2018-06-01 | 2018-06-01 |  | 2018-06-01 | 2018-06-01 |  | 82d | 14d |  | F1000 |
| 5 | 0.1 | Completion of Technical Documentation | milestone | 0d | 2019-01-25 | 2019-01-25 |  | 2019-01-25 | 2019-01-25 |  | 45d |  | finish no earlier than 2019-01-25 | F1001 |
| 6 | 0.1 | GENERAL ARRANGEMENT - ISSUED FOR REVIEW | milestone | 0d | 2018-06-01 | 2018-06-01 |  | 2018-06-01 | 2018-06-01 |  | 207d |  |  | M1001 |
| 7 | 0.1 | GENERAL ARRANGEMENT - ISSUED FOR DESIGN | milestone | 0d | 2018-12-07 | 2018-12-07 | 80 | 2018-12-07 | 2018-12-07 |  | 75d |  |  | M1002 |
| 8 | 0.1 | PFD/UFD - ISSUED FOR REVIEW | milestone | 0d | 2018-11-01 | 2018-11-01 |  | 2018-11-01 | 2018-11-01 |  | 99d |  | finish no earlier than 2018-11-01 | M1003 |
| 9 | 0.1 | PFD/UFD - ISSUED FOR DESIGN | milestone | 0d | 2018-12-04 | 2018-12-04 |  | 2018-12-04 | 2018-12-04 |  | 78d |  | finish no earlier than 2018-12-04 | M1004 |
| 10 | 0.1 | P&ID - ISSUED FOR REVIEW | milestone | 0d | 2018-10-22 | 2018-10-22 | 162 | 2018-10-22 | 2018-10-22 |  | 107d |  |  | M1005 |
| 11 | 0.1 | P&ID - ISSUED FOR DESIGN | milestone | 0d | 2018-11-05 | 2018-11-05 | 170 | 2018-11-05 | 2018-11-05 |  | 97d |  |  | M1006 |
| 12 | 0.1 | FEED KICKOFF MEETING | milestone | 0d | 2018-06-18 | 2018-06-18 |  | 2018-06-18 | 2018-06-18 |  | 195d |  | finish no earlier than 2018-06-18 | M1007 |
| 13 | 0.1 | HULL ENGINEERING - AWARD SUBCONTRACT | milestone | 0d | 2018-06-26 | 2018-06-26 |  | 2018-06-26 | 2018-06-26 |  | 189d |  | finish no earlier than 2018-06-26 | M1008 |
| 14 | 0.1 | HULL ENGINEERING KICKOFF MEETING | milestone | 0d | 2018-07-09 | 2018-07-09 |  | 2018-07-09 | 2018-07-09 |  | 181d |  | finish no earlier than 2018-07-09 | M1009 |
| 15 | 0.1 | SAFETY STUDIES - AWARD SUBCONTRACT | milestone | 0d | 2018-07-26 | 2018-07-26 |  | 2018-07-26 | 2018-07-26 |  | 168d |  | finish no earlier than 2018-07-26 | M1010 |
| 16 | 0.1 | PFD/UFD/GA - ISSUED FOR HAZID (By MODEC) | milestone | 0d | 2018-07-27 | 2018-07-27 |  | 2018-07-27 | 2018-07-27 |  | 81d | 0d | finish no earlier than 2018-07-27 | M1011 |
| 17 | 0.1 | PID - ISSUED FOR HAZOP | milestone | 0d | 2018-09-25 | 2018-09-25 | 171 | 2018-09-25 | 2018-09-25 |  | 103d | 0d | finish no earlier than 2018-09-25 | M1012 |
| 18 | 0.1 | COMMENCE 3D PDMS MODEL | milestone | 0d | 2018-09-25 | 2018-09-25 |  | 2018-09-25 | 2018-09-25 |  | 126d |  | finish no earlier than 2018-09-25 | M1013 |
| 19 | 0.1 | Geotechnical Survey Results (Confirm with CoP?) | milestone | 0d | 2018-11-05 | 2018-11-05 |  | 2018-11-05 | 2018-11-05 |  | 62d | 0d | finish no earlier than 2018-11-05 | M1046 |
| 20 | 0.1 | HAZID Workshop |  | 4d | 2018-08-01 | 2018-08-06 | 16 | 2018-08-01 | 2018-08-06 | 4d | 161d |  | start no earlier than 2018-08-01 | M1042 |
| 21 | 0.1 | HAZOP Workshop |  | 23d | 2018-09-26 | 2018-10-26 | 17 | 2018-09-26 | 2018-10-26 | 23d | 103d |  | start no earlier than 2018-09-25 | M1052 |
| 22 | 0.2 | **Milestones - DISC** |  | 24d | 2018-12-11 | 2019-01-21 |  |  |  |  | 49d |  |  |  |
| 23 | 0.2 | Escape Route Arrangement (LQ, main deck) Issued IFR | milestone | 0d | 2019-01-07 | 2019-01-07 | 62 | 2019-01-07 | 2019-01-07 |  | 59d |  | finish no earlier than 2018-10-17 | M1014 |
| 24 | 0.2 | Escape Route Arrangement (LQ, main deck) Issued IFD | milestone | 0d | 2019-01-17 | 2019-01-17 | 96 | 2019-01-17 | 2019-01-17 |  | 51d |  | finish no earlier than 2018-10-17 | M1015 |
| 25 | 0.2 | LQ and Accommodation Area GAs Issued IFR | milestone | 0d | 2018-12-11 | 2018-12-11 |  | 2018-12-11 | 2018-12-11 |  | 73d |  | finish no earlier than 2018-12-11 | M1016 |
| 26 | 0.2 | LQ and Accommodation Area GAs Issued IFD | milestone | 0d | 2018-12-11 | 2018-12-11 |  | 2018-12-11 | 2018-12-11 |  | 73d |  | finish no earlier than 2018-12-11 | M1017 |
| 27 | 0.2 | Hull Design - Class Approval in Principal | milestone | 0d | 2019-01-21 | 2019-01-21 |  | 2019-01-21 | 2019-01-21 |  | 49d |  | finish no earlier than 2019-01-21 | M1018 |

| ID | WBS | Task | Type | Duration | Start | Finish | Predecessors | Baseline start | Baseline finish | Baseline duration | Total slack | Free slack | Constraint | Text1 |
| --- | --- | --- | --- | --- | --- | --- | --- | --- | --- | --- | --- | --- | --- | --- |
| 28 | 0.3 | **Milestones - Turret** |  | 146d | 2018-07-02 | 2019-02-01 |  |  |  |  | 40d |  |  |  |
| 29 | 1.3.1 | Turret Start - SOFEC Internal Kickoff | milestone | 1d | 2018-07-02 | 2018-07-02 | 4 |  |  |  | 61d | 0d | start no earlier than 2018-07-02 |  |
| 30 | 0.3 | Turret GA Drawings Issued IFR | milestone | 0d | 2018-11-21 | 2018-11-21 | 58 | 2018-11-21 | 2018-11-21 |  | 85d |  |  | M1019 |
| 31 | 0.3 | Turret GA Drawings Issued IFD | milestone | 0d | 2018-12-07 | 2018-12-07 | 80 | 2018-12-07 | 2018-12-07 |  | 75d |  |  | M1020 |
| 32 | 0.3 | Turret 3D Model Ready to Integrate |  | 5d | 2019-01-28 | 2019-02-01 | 57 | 2019-01-28 | 2019-02-01 | 5d | 40d |  |  | M1021 |
| 33 | 0.3 | Turret 30% Model Review |  | 5d | 2018-12-10 | 2018-12-14 | 58 | 2018-12-10 | 2018-12-14 | 5d | 61d | 0d | start no earlier than 2018-12-10 | M1041 |
| 34 | 0.4 | **PROJECT CONTROLS** |  | 207d | 2018-06-01 | 2019-03-29 |  |  |  |  | 0d |  |  |  |
| 35 | 0.4 | PROJECT PLANNING PROCEDURE (MODEC) |  | 20d | 2018-07-02 | 2018-07-30 |  | 2018-07-02 | 2018-07-30 | 20d | 166d |  | start no earlier than 2018-07-01 | M1022 |
| 36 | 0.4 | DOCUMENT CONTROLS PROCEDURE (MODEC) |  | 21d | 2018-06-15 | 2018-07-16 |  | 2018-06-15 | 2018-07-16 | 21d | 176d |  | start no earlier than 2018-06-14 | M1023 |
| 37 | 0.4 | COST CONTROL PROCEDURE (MODEC) |  | 16d | 2018-06-08 | 2018-06-29 |  | 2018-06-08 | 2018-06-29 | 16d | 186d |  | start no earlier than 2018-06-07 | M1024 |
| 38 | 0.4 | L1 FEED SCHEDULE (MODEC) |  | 20d | 2018-06-25 | 2018-07-23 |  | 2018-06-25 | 2018-07-23 | 20d | 171d |  | start no earlier than 2018-06-24 | M1025 |
| 39 | 0.4 | WEEKLY REPORT PRO FORMA (MODEC) |  | 11d | 2018-06-04 | 2018-06-18 |  | 2018-06-04 | 2018-06-18 | 11d | 195d |  | start no earlier than 2018-06-03 | M1026 |
| 40 | 0.4 | MONTHLY REPORT PRO FORMA (MODEC) |  | 12d | 2018-06-01 | 2018-06-18 |  | 2018-06-01 | 2018-06-18 | 12d | 195d |  |  | M1027 |
| 41 | 0.4 | L2 FEED SCHEDULE (MODEC) |  | 20d | 2018-06-25 | 2018-07-23 |  | 2018-06-25 | 2018-07-23 | 20d | 171d |  | start no earlier than 2018-06-24 | M1028 |
| 42 | 0.4 | Basis of FEED Schedule (MODEC) |  | 16d | 2018-06-08 | 2018-06-29 |  | 2018-06-08 | 2018-06-29 | 16d | 186d |  | start no earlier than 2018-06-07 | M1029 |
| 43 | 0.4 | L1 EPCI SCHEDULE (MODEC) |  | 9d | 2018-12-04 | 2018-12-14 |  | 2018-12-04 | 2018-12-14 | 9d | 70d |  | start no earlier than 2018-12-03 | M1030 |
| 44 | 0.4 | L2 EPCI SCHEDULE (MODEC) |  | 17d | 2018-12-17 | 2019-01-15 |  | 2018-12-17 | 2019-01-15 | 17d | 53d |  | start no earlier than 2018-12-16 | M1031 |
| 45 | 0.4 | L3 EPCI SCHEDULE (MODEC) |  | 17d | 2018-12-17 | 2019-01-15 |  | 2018-12-17 | 2019-01-15 | 17d | 53d |  | start no earlier than 2018-12-16 | M1032 |
| 46 | 0.4 | Basis of EPCI Schedule (MODEC) |  | 16d | 2018-08-16 | 2018-09-07 |  | 2018-08-16 | 2018-09-07 | 16d | 138d |  | start no earlier than 2018-08-15 | M1033 |
| 47 | 0.4 | Basis of Execution Bid (MODEC) |  | 41d | 2018-09-25 | 2018-11-20 |  | 2018-09-25 | 2018-11-20 | 41d | 86d |  | start no earlier than 2018-09-24 | M1034 |
| 48 | 0.4 | COST ESTIMATE AND RISK ANALYSIS (MODEC) |  | 21d | 2019-03-01 | 2019-03-29 |  | 2019-03-01 | 2019-03-29 | 21d | 0d |  | start no earlier than 2019-02-28 | M1035 |
| 49 | 0.4 | COMMERCIAL COST ESTIMATE (CAPEX/OPEX PROFILE) (MODEC) |  | 73d | 2018-12-12 | 2019-03-29 |  | 2018-12-12 | 2019-03-29 | 73d | 0d |  | start no earlier than 2018-12-11 | M1036 |
| 50 | 0.4 | Piping Specification (MODEC) |  | 5d | 2018-06-01 | 2018-06-07 |  | 2018-06-01 | 2018-06-07 | 5d | 126d | 75d |  | M1056 |
| 51 | 0.4 | Piping Materials Specification (MODEC) |  | 5d | 2018-06-01 | 2018-06-07 |  | 2018-06-01 | 2018-06-07 | 5d | 126d | 75d |  | M1066 |
| 52 | 0.4 | Process Flow Diagrams (MODEC) |  | 5d | 2018-06-01 | 2018-06-07 |  | 2018-06-01 | 2018-06-07 | 5d | 202d |  |  | M1076 |

| ID | WBS | Task | Type | Duration | Start | Finish | Predecessors | Baseline start | Baseline finish | Baseline duration | Total slack | Free slack | Constraint | Work | Text1 |
| --- | --- | --- | --- | --- | --- | --- | --- | --- | --- | --- | --- | --- | --- | --- | --- |
| 53 | 1 | **Turret General** |  | 185d | 2018-06-21 | 2019-03-19 |  |  |  |  | 8d |  |  | 2669h |  |
| 54 | 1 | Turret FEED Master Document Register (Input to MODEC only) - IFR |  | 8d | 2018-06-21 | 2018-07-02 | 4 | 2018-06-21 | 2018-07-02 | 8d | 172d | 0d | start no earlier than 2018-06-21 | 47h | F1009-IFR |
| 55 | 1 | Turret FEED Schedule - IFR |  | 8d | 2018-06-21 | 2018-07-02 | 4 | 2018-06-21 | 2018-07-02 | 8d | 172d | 0d | start no earlier than 2018-06-21 |  | F1011-IFR |
| 56 | 1 | Turret Technical Description - IFR |  | 20d | 2018-11-26 | 2018-12-21 | 58 | 2018-11-26 | 2018-12-21 | 20d | 8d | 0d |  | 329h | F1003-IFR |
| 57 | 1 | Turret Navisworks 3D Model | milestone | 0d | 2019-01-25 | 2019-01-25 | 64FF | 2019-01-25 | 2019-01-25 |  | 40d | 0d |  |  | F1007 |
| 58 | 1 | Turret General Arrangement Drawings - IFR |  | 7d | 2018-11-13 | 2018-11-21 | 29 | 2018-11-13 | 2018-11-21 | 7d | 8d | 0d | start no earlier than 2018-11-13 | 39h | F1006-IFR |
| 59 | 1 | Turret Weight Report (Input to MODEC Only) |  | 30d | 2018-07-30 | 2018-09-10 | 16 | 2018-07-30 | 2018-09-10 | 30d | 137d |  | start no earlier than 2018-02-19 |  | F1023 |
| 60 | 1 | Turret Project Execution Plan - IFR |  | 15d | 2019-01-18 | 2019-02-07 | 83FS-80h | 2019-01-18 | 2019-02-07 | 15d | 26d | 0d | start no earlier than 2018-07-09 | 149h | F1004-IFR |
| 61 | 1 | Turret Integration Plan - IFR |  | 9d | 2018-11-13 | 2018-11-27 | 58SS | 2018-11-13 | 2018-11-27 | 9d | 68d | 0d | start no earlier than 2018-08-14 | 207h | F1018-IFR |
| 62 | 1 | Turret Emergency Escape Route Drawings - IFR |  | 6d | 2018-12-27 | 2019-01-07 | 58FS+160h | 2018-12-27 | 2019-01-07 | 6d | 51d | 0d |  | 470h | F1053-IFR |
| 63 | 1 | Geotechnical Survey Requirements for FEED - IFR |  | 10d | 2018-07-03 | 2018-07-17 | 29 | 2018-06-01 | 2018-06-01 |  | 156d | 0d |  | 20h | F1005-IFR |
| 64 | 1 | Turret PDMS Modeling |  | 131d | 2018-07-17 | 2019-01-25 | 162FF | 2018-07-17 | 2019-01-25 | 131d | 40d | 0d | start no earlier than 2018-07-17 |  | F1024 |
| 65 | 1 | Turret Utilities Consumption List - IFR |  | 9d | 2018-07-30 | 2018-08-09 | 16 | 2018-07-30 | 2018-08-09 | 9d | 149d | 0d |  | 47h | F1008-IFR |
| 66 | 1 | Turret Execution Master Document Register - IFR |  | 15d | 2018-12-14 | 2019-01-10 | 56FS-48h | 2018-12-14 | 2019-01-10 | 15d | 8d | 0d | start no earlier than 2018-06-21 |  | F1010-IFR |
| 67 | 1 | Turret Execution Schedule - IFR |  | 9d | 2019-01-04 | 2019-01-16 | 66FS-40h | 2019-01-04 | 2019-01-16 | 9d | 8d | 0d | start no earlier than 2018-08-14 | 207h | F1012-IFR |
| 68 | 1 | Turret Execution Phase Scope of Work - IFR |  | 9d | 2019-01-16 | 2019-01-28 | 85FS-80h | 2019-01-16 | 2019-01-28 | 9d | 8d | 0d |  | 167h | F1013-IFR |
| 69 | 1 | Turret Execution Phase Bid - IFR |  | 9d | 2019-02-22 | 2019-03-06 | 70 | 2019-02-22 | 2019-03-06 | 9d | 8d | 0d |  | 7h | F1014-IFR |
| 70 | 1 | Turret Execution Basis of Bid - IFR |  | 9d | 2019-02-11 | 2019-02-21 | 86 | 2019-02-11 | 2019-02-21 | 9d | 8d | 0d |  | 7h | F1015-IFR |
| 71 | 1 | List of assumptions and exclusions - IFR (?Discuss with MODEC) |  | 9d | 2018-08-14 | 2018-08-24 | 29 | 2018-08-14 | 2018-08-24 | 9d | 138d | 0d | start no earlier than 2018-08-14 | 7h | F1016-IFR |
| 72 | 1 | Procurement Plan - IFR |  | 9d | 2019-02-22 | 2019-03-06 | 70 | 2019-02-22 | 2019-03-06 | 9d | 8d | 0d | start no earlier than 2018-08-14 | 7h | F1017-IFR |
| 73 | 1 | Hazardous Area Classification Drawings - IFR |  | 5d | 2018-11-26 | 2018-11-30 | 58 | 2018-11-26 | 2018-11-30 | 5d | 70d | 0d |  | 564h | F1021-IFR |
| 74 | 1 | Hazardous Area Classification - Fluid Chart - IFR |  | 5d | 2018-11-26 | 2018-11-30 | 58 | 2018-11-26 | 2018-11-30 | 5d | 70d | 0d |  | 47h | F1022-IFR |
| 75 | 1 | Turret Project Quality Plan-IFR |  | 9d | 2018-11-13 | 2018-11-27 | 61SS | 2018-11-13 | 2018-11-27 | 9d | 74d | 0d | start no earlier than 2018-08-14 | 47h | F1019-IFR |
| 76 | 1 | Wave Basin Model Test Correlation Report - IFR |  | 8d | 2019-01-02 | 2019-01-11 | 104 | 2019-01-02 | 2019-01-11 | 8d | 45d | 0d | start no earlier than 2019-01-01 | 207h | F1020-IFR |
| 77 | 1 | Turret Technical Description - IFD |  | 15d | 2018-12-27 | 2019-01-18 | 56 | 2018-12-27 | 2019-01-18 | 15d | 50d |  |  |  | F1003-IFD |
| 78 | 1 | Turret Project Execution Plan - IFD |  | 10d | 2019-02-08 | 2019-02-21 | 60 | 2019-02-08 | 2019-02-21 | 10d | 26d | 18d |  |  | F1004-IFD |
| 79 | 1 | Geotechnical Survey Requirements for FEED - IFD |  | 19d | 2018-07-18 | 2018-08-13 | 63 | 2018-07-09 | 2018-08-02 | 19d | 156d |  | start no earlier than 2018-07-09 |  | F1005-IFD |
| 80 | 1 | Turret General Arrangement Drawings - IFD |  | 10d | 2018-11-26 | 2018-12-07 | 58 | 2018-11-26 | 2018-12-07 | 10d | 75d | 0d |  |  | F1006-IFD |
| 81 | 1 | Turret Utilities Consumption List - IFD |  | 9d | 2018-08-10 | 2018-08-22 | 65 | 2018-08-10 | 2018-08-22 | 9d | 149d |  |  |  | F1008-IFD |
| 82 | 1 | Turret FEED Master Document Register (Input to MODEC only) - IFD |  | 13d | 2018-07-03 | 2018-07-20 | 54 | 2018-07-03 | 2018-07-20 | 13d | 172d |  |  |  | F1009-IFD |
| 83 | 1 | Turret Execution Master Document Register - IFD |  | 15d | 2019-01-11 | 2019-01-31 | 66 | 2019-01-11 | 2019-01-31 | 15d | 26d | 0d |  | 47h | F1010-IFD |
| 84 | 1 | Turret FEED Schedule - IFD |  | 13d | 2018-07-03 | 2018-07-20 | 55 | 2018-07-03 | 2018-07-20 | 13d | 172d |  |  | 47h | F1011-IFD |
| 85 | 1 | Turret Execution Schedule - IFD |  | 9d | 2019-01-17 | 2019-01-29 | 67 | 2019-01-17 | 2019-01-29 | 9d | 8d | 0d |  |  | F1012-IFD |
| 86 | 1 | Turret Execution Phase Scope of Work - IFD |  | 9d | 2019-01-29 | 2019-02-08 | 68 | 2019-01-29 | 2019-02-08 | 9d | 8d | 0d |  |  | F1013-IFD |
| 87 | 1 | Turret Execution Phase Bid - IFD |  | 9d | 2019-03-07 | 2019-03-19 | 69 | 2019-03-07 | 2019-03-19 | 9d | 8d | 0d |  |  | F1014-IFD |
| 88 | 1 | Turret Execution Basis of Bid - IFD |  | 9d | 2019-02-22 | 2019-03-06 | 70 | 2019-02-22 | 2019-03-06 | 9d | 17d | 9d |  |  | F1015-IFD |
| 89 | 1 | List of assumptions and exclusions - IFD (?Discuss with MODEC) |  | 9d | 2018-08-27 | 2018-09-07 | 71 | 2018-08-27 | 2018-09-07 | 9d | 138d |  |  |  | F1016-IFD |
| 90 | 1 | Procurement Plan - IFD |  | 9d | 2019-03-07 | 2019-03-19 | 72 | 2019-03-07 | 2019-03-19 | 9d | 8d | 0d |  |  | F1017-IFD |
| 91 | 1 | Turret Integration Plan - IFD |  | 15d | 2018-11-28 | 2018-12-18 | 61 | 2018-11-28 | 2018-12-18 | 15d | 68d |  |  |  | F1018-IFD |
| 92 | 1 | Turret Project Quality Plan-IFD |  | 9d | 2018-11-28 | 2018-12-10 | 75 | 2018-11-28 | 2018-12-10 | 9d | 74d |  |  |  | F1019-IFD |
| 93 | 1 | Wave Basin Model Test Correlation Report - IFD |  | 10d | 2019-01-14 | 2019-01-25 | 76 | 2019-01-14 | 2019-01-25 | 10d | 45d |  |  |  | F1020-IFD |
| 94 | 1 | Hazardous Area Classification Drawings - IFD |  | 10d | 2018-12-03 | 2018-12-14 | 73 | 2018-12-03 | 2018-12-14 | 10d | 70d |  |  |  | F1021-IFD |
| 95 | 1 | Hazardous Area Classification - Fluid Chart - IFD |  | 10d | 2018-12-03 | 2018-12-14 | 74 | 2018-12-03 | 2018-12-14 | 10d | 70d |  |  |  | F1022-IFD |
| 96 | 1 | Turret Emergency Escape Route Drawings - IFD |  | 8d | 2019-01-08 | 2019-01-17 | 62 | 2019-01-08 | 2019-01-17 | 8d | 51d | 0d |  |  | F1053-IFD |

| ID | WBS | Task | Duration | Start | Finish | Predecessors | Baseline start | Baseline finish | Baseline duration | Total slack | Free slack | Constraint | Work | Text1 |
| --- | --- | --- | --- | --- | --- | --- | --- | --- | --- | --- | --- | --- | --- | --- |
| 97 | 2 | **Turret Mooring** | 131d | 2018-07-17 | 2019-01-25 |  |  |  |  | 45d |  |  | 1368h |  |
| 98 | 2 | Turret Mooring System Design Loads Report - IFR | 28d | 2018-11-12 | 2018-12-21 | 102 | 2018-11-12 | 2018-12-21 | 28d | 45d | 0d | start no earlier than 2018-09-01 | 187h | F1034-IFR |
| 99 | 2 | Anchor Leg Installation Guideline - IFR (MODEC to Install) | 8d | 2018-11-29 | 2018-12-10 | 146FS-80h | 2018-11-29 | 2018-12-10 | 8d | 64d | 0d |  | 87h | F1025-IFR |
| 100 | 2 | Anchor Leg Monitoring System Philosophy - IFR | 8d | 2018-07-30 | 2018-08-08 | 101 | 2018-07-30 | 2018-08-08 | 8d | 79d | 0d |  | 87h | F1026-IFR |
| 101 | 2 | Mooring Design Basis - IFR | 9d | 2018-07-17 | 2018-07-27 | 29 | 2018-07-17 | 2018-07-27 | 9d | 56d | 0d | start no earlier than 2018-07-17 | 127h | F1027-IFR |
| 102 | 2 | Wind Tunnel Model Test Report - IFR | 15d | 2018-10-22 | 2018-11-09 | 116 | 2018-10-22 | 2018-11-09 | 15d | 45d | 0d |  | 167h | F1029-IFR |
| 103 | 2 | Wind Tunnel Test Specification - IFR | 9d | 2018-09-04 | 2018-09-14 | 109FS+120h | 2018-09-04 | 2018-09-14 | 9d | 56d | 0d |  | 132h | F1030-IFR |
| 104 | 2 | Wave Basin Model Test Report - IFR | 8d | 2018-12-10 | 2018-12-19 | 117 | 2018-12-10 | 2018-12-19 | 8d | 45d | 0d |  | 207h | F1031-IFR |
| 105 | 2 | Wave Basin Test Specification - IFR | 9d | 2018-09-17 | 2018-09-27 | 109FS+192h | 2018-09-17 | 2018-09-27 | 9d | 61d | 0d |  | 167h | F1032-IFR |
| 106 | 2 | Heading Analysis and Offloading Availability Study Report - IFR | 28d | 2018-11-12 | 2018-12-21 | 102 | 2018-11-12 | 2018-12-21 | 28d | 45d | 0d |  | 207h | F1033-IFR |
| 107 | 2 | Anchor Leg Installation Guideline - IFD (MODEC to Install) | 10d | 2018-12-11 | 2018-12-27 | 99 | 2018-12-11 | 2018-12-27 | 10d | 64d |  |  |  | F1025-IFD |
| 108 | 2 | Anchor Leg Monitoring System Philosophy - IFD | 80d | 2018-08-09 | 2018-12-03 | 100 | 2018-08-09 | 2018-12-03 | 80d | 79d |  |  |  | F1026-IFD |
| 109 | 2 | Mooring Design Basis - IFD | 10d | 2018-07-30 | 2018-08-10 | 101 | 2018-07-30 | 2018-08-10 | 10d | 56d | 0d |  |  | F1027-IFD |
| 110 | 2 | Wind Tunnel Model Test Report - IFD | 10d | 2018-11-12 | 2018-11-27 | 102 | 2018-11-12 | 2018-11-27 | 10d | 83d |  |  |  | F1029-IFD |
| 111 | 2 | Wind Tunnel Test Specification - IFD | 9d | 2018-09-17 | 2018-09-27 | 103 | 2018-09-17 | 2018-09-27 | 9d | 56d | 11d |  |  | F1030-IFD |
| 112 | 2 | Wave Basin Model Test Report - IFD | 22d | 2018-12-20 | 2019-01-25 | 104 | 2018-12-20 | 2019-01-25 | 22d | 45d |  |  |  | F1031-IFD |
| 113 | 2 | Wave Basin Test Specification - IFD | 10d | 2018-09-28 | 2018-10-11 | 105 | 2018-09-28 | 2018-10-11 | 10d | 61d | 16d |  |  | F1032-IFD |
| 114 | 2 | Heading Analysis and Offloading Availability Study Report - IFD | 20d | 2018-12-27 | 2019-01-25 | 106 | 2018-12-27 | 2019-01-25 | 20d | 45d |  |  |  | F1033-IFD |
| 115 | 2 | Turret Mooring System Design Loads Report - IFD | 10d | 2019-01-14 | 2019-01-25 | 98, 76 | 2019-01-14 | 2019-01-25 | 10d | 45d |  |  |  | F1034-IFD |
| 116 | 2 | Wind Tunnel Test | 5d | 2018-10-15 | 2018-10-19 | 111 | 2018-10-15 | 2018-10-19 | 5d | 45d | 0d | start no earlier than 2018-10-15 |  | F1030 |
| 117 | 2 | Wave Basin Test | 23d | 2018-11-05 | 2018-12-07 | 113 | 2018-11-05 | 2018-12-07 | 23d | 45d | 0d | start no earlier than 2018-11-05 |  | F1032 |
| 118 | 3 | **Turret Mechanical** | 115d | 2018-07-17 | 2019-01-03 |  |  |  |  | 61d |  |  | 1285h |  |
| 119 | 3 | Wheel and Rail Upper-Bearing - Design Basis - IFR | 9d | 2018-07-17 | 2018-07-27 | 29 | 2018-07-17 | 2018-07-27 | 9d | 157d | 0d | start no earlier than 2018-07-17 | 87h | F1035-IFR |
| 120 | 3 | Dual-Axis Chain Support Assembly - Design Basis - IFR | 9d | 2018-07-17 | 2018-07-27 | 29 | 2018-07-17 | 2018-07-27 | 9d | 115d | 0d | start no earlier than 2018-07-17 | 87h | F1036-IFR |
| 121 | 3 | Dual-Axis Chain Support Assembly - General Assembly - IFR | 9d | 2018-09-04 | 2018-09-14 | 133FS+120h | 2018-09-04 | 2018-09-14 | 9d | 115d | 0d | start no earlier than 2018-07-31 | 47h | F1037-IFR |
| 122 | 3 | Lower Bearing - Design Basis - IFR | 9d | 2018-07-17 | 2018-07-27 | 29 | 2018-07-17 | 2018-07-27 | 9d | 157d | 0d | start no earlier than 2018-07-17 | 87h | F1038-IFR |
| 123 | 3 | Lower Bearing General Arrangement - IFR | 9d | 2018-11-13 | 2018-11-27 | 58SS | 2018-11-13 | 2018-11-27 | 9d | 74d | 0d | start no earlier than 2018-08-21 | 67h | F1039-IFR |
| 124 | 3 | Swivel Stack Assembly - Design Basis - IFR | 9d | 2018-07-17 | 2018-07-27 | 29 | 2018-07-17 | 2018-07-27 | 9d | 157d | 0d | start no earlier than 2018-07-17 | 127h | F1040-IFR |
| 125 | 3 | Swivel Stack Assembly General Arrangement - IFR | 43d | 2018-09-10 | 2018-11-07 | 58FF-80h | 2018-09-10 | 2018-11-07 | 43d | 65d | 0d | start no earlier than 2018-08-21 | 501h | F1041-IFR |
| 126 | 3 | Mechanical Handling Equipment - Design Basis - IFR | 9d | 2018-07-17 | 2018-07-27 | 29 | 2018-07-17 | 2018-07-27 | 9d | 130d | 0d | start no earlier than 2018-07-17 | 87h | F1042-IFR |
| 127 | 3 | Mechanical Handling Study Report (Including Bearing Changeout) - IFR | 15d | 2018-11-26 | 2018-12-14 | 58 | 2018-11-26 | 2018-12-14 | 15d | 61d | 0d | start no earlier than 2018-07-17 | 7h | F1043-IFR |
| 128 | 3 | Chain Support Assembly Deployment System - Design Basis - IFR | 9d | 2018-07-17 | 2018-07-27 | 29 | 2018-07-17 | 2018-07-27 | 9d | 157d | 0d | start no earlier than 2018-07-17 |  | F1044-IFR |
| 129 | 3 | Chain Support Assembly Deployment System - Assembly - IFR | 29d | 2018-07-17 | 2018-08-24 | 29 | 2018-07-17 | 2018-08-24 | 29d | 138d | 0d | start no earlier than 2018-07-17 | 7h | F1045-IFR |
| 130 | 3 | Cathodic Protection - Design Basis - IFR | 9d | 2018-07-17 | 2018-07-27 | 29 | 2018-07-17 | 2018-07-27 | 9d | 157d | 0d | start no earlier than 2018-07-17 | 87h | F1046-IFR |
| 131 | 3 | Riser Pull-in System Design and Plan - IFR | 9d | 2018-09-25 | 2018-10-05 | 139 | 2018-09-25 | 2018-10-05 | 9d | 100d | 0d | start no earlier than 2018-09-25 | 7h | F1047-IFR |
| 132 | 3 | Wheel and Rail Upper-Bearing - Design Basis - IFD | 10d | 2018-07-30 | 2018-08-10 | 119 | 2018-07-30 | 2018-08-10 | 10d | 157d |  |  |  | F1035-IFD |
| 133 | 3 | Dual-Axis Chain Support Assembly - Design Basis - IFD | 10d | 2018-07-30 | 2018-08-10 | 120 | 2018-07-30 | 2018-08-10 | 10d | 115d | 0d |  |  | F1036-IFD |
| 134 | 3 | Dual-Axis Chain Support Assembly - General Assembly - IFD | 10d | 2018-09-17 | 2018-09-28 | 121 | 2018-09-17 | 2018-09-28 | 10d | 123d |  |  |  | F1037-IFD |
| 135 | 3 | Lower Bearing - Design Basis - IFD | 10d | 2018-07-30 | 2018-08-10 | 122 | 2018-07-30 | 2018-08-10 | 10d | 157d |  |  |  | F1038-IFD |
| 136 | 3 | Lower Bearing General Arrangement - IFD | 9d | 2018-11-28 | 2018-12-10 | 123 | 2018-11-28 | 2018-12-10 | 9d | 74d |  |  |  | F1039-IFD |
| 137 | 3 | Swivel Stack Assembly - Design Basis - IFD | 10d | 2018-07-30 | 2018-08-10 | 124 | 2018-07-30 | 2018-08-10 | 10d | 157d |  |  |  | F1040-IFD |
| 138 | 3 | Swivel Stack Assembly General Arrangement - IFD | 10d | 2018-11-08 | 2018-11-21 | 125 | 2018-11-08 | 2018-11-21 | 10d | 67d | 22d |  |  | F1041-IFD |
| 139 | 3 | Mechanical Handling Equipment - Design Basis - IFD | 10d | 2018-07-30 | 2018-08-10 | 126 | 2018-07-30 | 2018-08-10 | 10d | 130d | 30d |  |  | F1042-IFD |
| 140 | 3 | Mechanical Handling Study Report (Including Bearing Changeout) - IFD | 9d | 2018-12-17 | 2019-01-03 | 33, 127 | 2018-12-17 | 2019-01-03 | 9d | 61d |  |  |  | F1043-IFD |
| 141 | 3 | Chain Support Assembly Deployment System - Design Basis - IFD | 10d | 2018-07-30 | 2018-08-10 | 128 | 2018-07-30 | 2018-08-10 | 10d | 157d |  |  | 87h | F1044-IFD |
| 142 | 3 | Chain Support Assembly Deployment System - Assembly - IFD | 9d | 2018-08-27 | 2018-09-07 | 129 | 2018-08-27 | 2018-09-07 | 9d | 138d |  |  |  | F1045-IFD |
| 143 | 3 | Cathodic Protection - Design Basis - IFD | 10d | 2018-07-30 | 2018-08-10 | 130 | 2018-07-30 | 2018-08-10 | 10d | 157d |  |  |  | F1046-IFD |
| 144 | 3 | Riser Pull-in System Design and Plan - IFD | 10d | 2018-10-08 | 2018-10-19 | 131 | 2018-10-08 | 2018-10-19 | 10d | 108d |  |  |  | F1047-IFD |

| ID | WBS | Task | Duration | Start | Finish | Predecessors | Baseline start | Baseline finish | Baseline duration | Total slack | Free slack | Constraint | Work | Text1 |
| --- | --- | --- | --- | --- | --- | --- | --- | --- | --- | --- | --- | --- | --- | --- |
| 145 | 4 | **Turret Structural** | 124d | 2018-07-17 | 2019-01-16 |  |  |  |  | 52d |  |  | 988h |  |
| 146 | 4 | Anchor Design Report - IFR | 25d | 2018-11-06 | 2018-12-12 | 19, 109 | 2018-11-06 | 2018-12-12 | 25d | 62d | 0d |  | 327h | F1028-IFR |
| 147 | 4 | Turret Structure Design Report - IFR | 90d | 2018-08-13 | 2018-12-19 | 149SS | 2018-08-13 | 2018-12-19 | 90d | 52d | 0d |  | 327h | F1049-IFR |
| 148 | 4 | Turret Structural Design Basis - IFR | 9d | 2018-07-17 | 2018-07-27 | 29 | 2018-07-17 | 2018-07-27 | 9d | 52d | 0d | start no earlier than 2018-07-17 | 87h | F1048-IFR |
| 149 | 4 | Moonpool Structure - Interface Design and Analysis Report - IFR | 70d | 2018-08-13 | 2018-11-19 | 151 | 2018-08-13 | 2018-11-19 | 70d | 52d | 0d |  | 247h | F1050-IFR |
| 150 | 4 | Anchor Design Report - IFD | 10d | 2018-12-13 | 2019-01-02 | 146 | 2018-12-13 | 2019-01-02 | 10d | 62d |  |  |  | F1028-IFD |
| 151 | 4 | Turret Structural Design Basis - IFD | 10d | 2018-07-30 | 2018-08-10 | 148 | 2018-07-30 | 2018-08-10 | 10d | 52d | 0d |  |  | F1048-IFD |
| 152 | 4 | Turret Structure Design Report - IFD | 15d | 2018-12-20 | 2019-01-16 | 147 | 2018-12-20 | 2019-01-16 | 15d | 52d |  |  |  | F1049-IFD |
| 153 | 4 | Moonpool Structure - Interface Design and Analysis Report - IFD | 10d | 2018-11-20 | 2018-12-05 | 149 | 2018-11-20 | 2018-12-05 | 10d | 77d |  |  |  | F1050-IFD |
| 154 | 5 | **Turret Piping** | 131d | 2018-07-17 | 2019-01-25 |  |  |  |  | 45d |  |  | 1616h |  |
| 155 | 5 | Turret Safety Equipment Locations - IFR | 5d | 2018-12-27 | 2019-01-04 | 58 | 2018-12-27 | 2019-01-04 | 5d | 50d | 0d | start no earlier than 2018-12-25 | 517h | F1054-IFR |
| 156 | 5 | Turret Speciality Piping Item List - IFR | 8d | 2019-01-02 | 2019-01-11 | 162FF | 2019-01-02 | 2019-01-11 | 8d | 45d | 0d | start no earlier than 2019-01-01 | 47h | F1055-IFR |
| 157 | 5 | Piping System - Design Basis - IFR | 9d | 2018-07-17 | 2018-07-27 | 29 | 2018-07-17 | 2018-07-27 | 9d | 91d | 0d | start no earlier than 2018-07-17 | 87h | F1056-IFR |
| 158 | 5 | Turret Pipe Stress Analysis Report - Critical Lines Only - IFR (Need to Expedite Start) | 20d | 2018-12-10 | 2019-01-11 | 64SS, 162, 125, 98FS-80h | 2018-12-10 | 2019-01-11 | 20d | 45d | 0d |  | 207h | F1057-IFR |
| 159 | 5 | Turret Piping Line List - IFR | 48d | 2018-10-23 | 2019-01-07 | 162 | 2018-10-23 | 2019-01-07 | 48d | 51d | 0d | start no earlier than 2018-10-02 | 47h | F1058-IFR |
| 160 | 5 | Turret Firewater Demand Calculation - IFR | 34d | 2018-09-05 | 2018-10-22 | 162FF, 157 | 2018-09-05 | 2018-10-22 | 34d | 97d | 0d | start no earlier than 2018-08-27 | 67h | F1059-IFR |
| 161 | 5 | Turret Drain Philosophy - IFR | 9d | 2018-07-17 | 2018-07-27 | 29 | 2018-07-17 | 2018-07-27 | 9d | 157d | 0d | start no earlier than 2018-07-17 | 87h | F1060-IFR |
| 162 | 5 | Turret P&IDs - IFR | 20d | 2018-09-25 | 2018-10-22 | 171, 157, 51, 50 | 2018-09-25 | 2018-10-22 | 20d | 51d | 0d | start no earlier than 2018-08-13 | 557h | F1061-IFR |
| 163 | 5 | Turret Safety Equipment Locations - IFD | 10d | 2019-01-07 | 2019-01-18 | 155 | 2019-01-07 | 2019-01-18 | 10d | 50d |  |  |  | F1054-IFD |
| 164 | 5 | Turret Speciality Piping Item List - IFD | 10d | 2019-01-14 | 2019-01-25 | 156 | 2019-01-14 | 2019-01-25 | 10d | 45d |  |  |  | F1055-IFD |
| 165 | 5 | Piping System - Design Basis - IFD | 10d | 2018-07-30 | 2018-08-10 | 157 | 2018-07-30 | 2018-08-10 | 10d | 157d |  |  |  | F1056-IFD |
| 166 | 5 | Turret Pipe Stress Analysis Report - Critical Lines Only - IFD | 10d | 2019-01-14 | 2019-01-25 | 158 | 2019-01-14 | 2019-01-25 | 10d | 45d |  |  |  | F1057-IFD |
| 167 | 5 | Turret Piping Line List - IFD | 8d | 2019-01-08 | 2019-01-17 | 159 | 2019-01-08 | 2019-01-17 | 8d | 51d |  |  |  | F1058-IFD |
| 168 | 5 | Turret Firewater Demand Calculation - IFD | 10d | 2018-10-23 | 2018-11-05 | 160 | 2018-10-23 | 2018-11-05 | 10d | 97d |  |  |  | F1059-IFD |
| 169 | 5 | Turret Drain Philosophy - IFD | 10d | 2018-07-30 | 2018-08-10 | 161 | 2018-07-30 | 2018-08-10 | 10d | 157d |  |  |  | F1060-IFD |
| 170 | 5 | Turret P&IDs - IFD | 10d | 2018-10-23 | 2018-11-05 | 162 | 2018-10-23 | 2018-11-05 | 10d | 97d | 0d |  |  | F1061-IFD |
| 171 | 5 | Turret P&IDs - IFH | 10d | 2018-09-11 | 2018-09-24 | 16 | 2018-09-11 | 2018-09-24 | 10d | 51d | 0d | finish no earlier than 2018-09-24 |  | F1061-IFH |

| ID | WBS | Task | Duration | Start | Finish | Predecessors | Baseline start | Baseline finish | Baseline duration | Total slack | Free slack | Constraint | Work | Text1 |
| --- | --- | --- | --- | --- | --- | --- | --- | --- | --- | --- | --- | --- | --- | --- |
| 172 | 6 | **Turret Equipment** | 18d | 2019-01-02 | 2019-01-25 |  |  |  |  | 45d |  |  | 167h |  |
| 173 | 6 | Turret Major Equipment List - IFR | 8d | 2019-01-02 | 2019-01-11 | 162, 138, 121, 131 | 2019-01-02 | 2019-01-11 | 8d | 45d | 0d | start no earlier than 2019-01-01 | 167h | F1062-IFR |
| 174 | 6 | Turret Major Equipment List - IFD | 10d | 2019-01-14 | 2019-01-25 | 173 | 2019-01-14 | 2019-01-25 | 10d | 45d |  |  |  | F1062-IFD |
| 175 | 7 | **Turret Electrical & Instrumentation** | 131d | 2018-07-17 | 2019-01-25 |  |  |  |  | 45d |  |  | 1213h |  |
| 176 | 7 | Turret Instrumentation One Line Diagrams - IFR | 9d | 2018-08-14 | 2018-08-24 | 182 | 2018-08-14 | 2018-08-24 | 9d | 138d | 0d | start no earlier than 2018-08-14 | 87h | F1063-IFR |
| 177 | 7 | Turret Electrical Load List - IFR | 10d | 2019-01-02 | 2019-01-15 | 173SS, 184 | 2019-01-02 | 2019-01-15 | 10d | 45d | 0d | start no earlier than 2018-08-10 | 87h | F1070-IFR |
| 178 | 7 | Turret Electrical One Line Diagrams - IFR | 9d | 2018-09-11 | 2018-09-21 | 182 | 2018-09-11 | 2018-09-21 | 9d | 118d | 0d | start no earlier than 2018-09-11 | 416h | F1064-IFR |
| 179 | 7 | Turret Instrument Index - IFR | 9d | 2018-10-09 | 2018-10-19 | 162SS+80h | 2018-10-09 | 2018-10-19 | 9d | 98d | 0d | start no earlier than 2018-09-11 | 47h | F1065-IFR |
| 180 | 7 | Turret Instrument Input /Output List - IFR | 9d | 2018-09-25 | 2018-10-05 | 162SS | 2018-09-25 | 2018-10-05 | 9d | 108d | 0d | start no earlier than 2018-09-11 | 47h | F1066-IFR |
| 181 | 7 | Turret Local Equipment Room - General Layout - IFR (Need Input From Leads) | 6d | 2018-11-26 | 2018-12-03 | 187 | 2018-11-26 | 2018-12-03 | 6d | 69d | 0d | start no earlier than 2018-11-23 | 87h | F1051-IFR |
| 182 | 7 | Turret Electrical & Instrumentation- Design Basis - IFR | 9d | 2018-07-17 | 2018-07-27 | 29 | 2018-07-17 | 2018-07-27 | 9d | 107d | 0d | start no earlier than 2018-07-17 | 87h | F1067-IFR |
| 183 | 7 | Electrical - Interface Block Diagram - IFR | 50d | 2018-09-21 | 2018-12-03 | 182 | 2018-09-21 | 2018-12-03 | 50d | 69d | 0d | start no earlier than 2018-09-21 | 47h | F1068-IFR |
| 184 | 7 | Electrical - Block Diagram - IFR | 40d | 2018-08-10 | 2018-10-05 | 182 | 2018-08-10 | 2018-10-05 | 40d | 100d | 0d | start no earlier than 2018-08-10 | 47h | F1069-IFR |
| 185 | 7 | Turret Instrumentation Block Diagrams - IFR | 11d | 2018-08-10 | 2018-08-24 | 182 | 2018-08-10 | 2018-08-24 | 11d | 138d | 0d | start no earlier than 2018-08-10 | 87h | F1071-IFR |
| 186 | 7 | Turret Instrumentation Interface Block Diagrams - IFR | 29d | 2018-07-30 | 2018-09-07 | 187 | 2018-07-30 | 2018-09-07 | 29d | 129d | 0d | start no earlier than 2018-07-17 | 87h | F1072-IFR |
| 187 | 7 | Turret Local Equipment Room - Design Basis - IFR | 9d | 2018-07-17 | 2018-07-27 | 29 | 2018-07-17 | 2018-07-27 | 9d | 129d | 0d | start no earlier than 2018-07-17 | 87h | F1052-IFR |
| 188 | 7 | Turret Local Equipment Room - General Layout - IFD | 10d | 2018-12-04 | 2018-12-17 | 181 | 2018-12-04 | 2018-12-17 | 10d | 69d |  |  |  | F1051-IFD |
| 189 | 7 | Turret Local Equipment Room - Design Basis - IFD | 10d | 2018-07-30 | 2018-08-10 | 187 | 2018-07-30 | 2018-08-10 | 10d | 157d |  |  |  | F1052-IFD |
| 190 | 7 | Turret Instrumentation One Line Diagrams - IFD | 9d | 2018-08-27 | 2018-09-07 | 176 | 2018-08-27 | 2018-09-07 | 9d | 138d |  |  |  | F1063-IFD |
| 191 | 7 | Turret Electrical One Line Diagrams - IFD | 10d | 2018-09-24 | 2018-10-05 | 178 | 2018-09-24 | 2018-10-05 | 10d | 118d |  |  |  | F1064-IFD |
| 192 | 7 | Turret Instrument Index - IFD | 10d | 2018-10-22 | 2018-11-02 | 179 | 2018-10-22 | 2018-11-02 | 10d | 98d |  |  |  | F1065-IFD |
| 193 | 7 | Turret Instrument Input /Output List - IFD | 10d | 2018-10-08 | 2018-10-19 | 180 | 2018-10-08 | 2018-10-19 | 10d | 108d |  |  |  | F1066-IFD |
| 194 | 7 | Turret Electrical & Instrumentation- Design Basis - IFD | 10d | 2018-07-30 | 2018-08-10 | 182 | 2018-07-30 | 2018-08-10 | 10d | 157d |  |  |  | F1067-IFD |
| 195 | 7 | Electrical - Interface Block Diagram - IFD | 10d | 2018-12-04 | 2018-12-17 | 183 | 2018-12-04 | 2018-12-17 | 10d | 69d |  |  |  | F1068-IFD |
| 196 | 7 | Electrical - Block Diagram - IFD | 10d | 2018-10-08 | 2018-10-19 | 184, 184FF | 2018-10-08 | 2018-10-19 | 10d | 108d |  |  |  | F1069-IFD |
| 197 | 7 | Turret Electrical Load List - IFD | 8d | 2019-01-16 | 2019-01-25 | 177 | 2019-01-16 | 2019-01-25 | 8d | 45d |  |  |  | F1070-IFD |
| 198 | 7 | Turret Instrumentation Block Diagrams - IFD | 9d | 2018-08-27 | 2018-09-07 | 185 | 2018-08-27 | 2018-09-07 | 9d | 138d |  |  |  | F1071-IFD |
| 199 | 7 | Turret Instrumentation Interface Block Diagrams - IFD | 9d | 2018-09-10 | 2018-09-20 | 186 | 2018-09-10 | 2018-09-20 | 9d | 129d |  |  |  | F1072-IFD |
